# Opracowanie strony internetowej

How a schedule from MS Project changed from version to version. A marks actual dates.

## Version 1 (saved 2024-04-17, file lista2.mpp)

Note of the change: Lista 2 - init

| ID | WBS | Task | Duration | Start | Finish | Total float |
| --- | --- | --- | --- | --- | --- | --- |
| 1 | 1 | **Iteracja 1** | 1d | 2024-03-25 | 2024-03-25 | 0d |
| 2 | 1.1 | **Projektowanie** | 1d | 2024-03-25 | 2024-03-25 | 0d |
| 3 | 1.1.1 | **Interfejs użytkownika internetowego** | 0d | 2024-03-25 | 2024-03-25 | 1d |
| 4 | 1.1.1.1 | **Specyfikacja techniczna** | 0d | 2024-03-25 | 2024-03-25 | 1d |
| 5 |  | Opracuj specyfikacje techniczne | 1d | 2024-03-25 | 2024-03-25 |  |
| 6 |  | Zapoznaj się z specyfikacjami technicznymi z zespołem projektowym | 1d | 2024-03-25 | 2024-03-25 |  |
| 7 |  | Uzyskaj akceptację zespołu | 1d | 2024-03-25 | 2024-03-25 |  |
| 8 | 1.1.2 | **Baza danych SQL** | 0d | 2024-03-25 | 2024-03-25 | 1d |
| 9 | 1.1.2.1 | **Specyfikacja techniczna** | 0d | 2024-03-25 | 2024-03-25 | 1d |
| 10 |  | Opracuj specyfikacje techniczne | 1d? | 2024-03-25 | 2024-03-25 |  |
| 11 |  | Zapoznaj się z specyfikacjami technicznymi z zespołem projektowym | 1d? | 2024-03-25 | 2024-03-25 |  |
| 12 |  | Uzyskaj akceptację zespołu | 1d | 2024-03-25 | 2024-03-25 |  |
| 13 | 1.1.3 | **Raporty** | 1d | 2024-03-25 | 2024-03-25 | 0d |
| 14 | 1.1.3.1 | **Specyfikacje funkcjonalne** | 1d | 2024-03-25 | 2024-03-25 | 0d |
| 15 | 1.1.3.1.1 | **Zbierz wymagania użytkownika** | 0d | 2024-03-25 | 2024-03-25 | 1d |
| 16 |  | Zdefiniuj elementy danych | 1d | 2024-03-25 | 2024-03-25 |  |
| 17 |  | Zdefiniuj częstotliwość wywoływania strony | 1d | 2024-03-25 | 2024-03-25 |  |
| 18 |  | Zdefiniuj odbiorców | 1d | 2024-03-25 | 2024-03-25 |  |
| 19 |  | Raporty z wykonanych projektów | 1d | 2024-03-25 | 2024-03-25 | 0d |
| 20 |  | Zdefiniuj raport z zespołem projektowym | 1d | 2024-03-25 | 2024-03-25 | 0d |
| 21 |  | Dostarcz ostateczne specyfikacje funkcjonalne | 1d | 2024-03-25 | 2024-03-25 | 0d |
| 22 |  | Uzyskaj akceptację użytkownika | 1d | 2024-03-25 | 2024-03-25 |  |
| 23 | 1.2 | **Implementacja** | 1d | 2024-03-25 | 2024-03-25 | 0d |
| 24 | 1.2.1 | **Baza danych SQL** | 1d | 2024-03-25 | 2024-03-25 | 0d |
| 25 |  | Identyfikuj relacje | 1d | 2024-03-25 | 2024-03-25 | 0d |
| 26 |  | Tworzenie tabel bazy danych | 1d | 2024-03-25 | 2024-03-25 |  |
| 27 |  | Przegląd tabel z zespołem projektowym | 1d | 2024-03-25 | 2024-03-25 |  |
| 28 |  | Uzyskaj akceptację zespołu | 1d | 2024-03-25 | 2024-03-25 |  |
| 29 | 1.3 | **Zapewnienie jakości** | 0d | 2024-03-25 | 2024-03-25 | 1d |
| 30 | 1.3.1 | **Baza danych SQL** | 0d | 2024-03-25 | 2024-03-25 | 1d |
| 31 |  | Weryfikuj elementy projektu / danych | 1d? | 2024-03-25 | 2024-03-25 |  |
| 32 |  | Zweryfikuj relacje | 1d? | 2024-03-25 | 2024-03-25 |  |
| 33 | 1.4 | **Zapewnienie jakości** | 0d | 2024-03-25 | 2024-03-25 | 1d |
| 34 | 1.4.1 | **Raporty** | 0d | 2024-03-25 | 2024-03-25 | 1d |
| 35 |  | Sprawdź projekt i funkcjonalność | 1d | 2024-03-25 | 2024-03-25 |  |
| 37 | 2 | **Iteracja 2** | 1d | 2024-03-25 | 2024-03-25 | 0d |
| 38 | 2.1 | **Projektowanie** | 1d | 2024-03-25 | 2024-03-25 | 0d |
| 39 | 2.1.1 | **Interfejs użytkownika internetowego** | 1d | 2024-03-25 | 2024-03-25 | 0d |
| 40 | 2.1.1.1 | **Specyfikacje funkcjonalne** | 1d | 2024-03-25 | 2024-03-25 | 0d |
| 41 |  | Utwórz makiety interfejsu użytkownika | 1d | 2024-03-25 | 2024-03-25 |  |
| 42 |  | Przeprowadź przegląd projektu | 1d | 2024-03-25 | 2024-03-25 |  |
| 43 |  | Dostarcz ostateczne specyfikacje funkcjonalne | 1d | 2024-03-25 | 2024-03-25 |  |
| 44 |  | Uzyskaj akceptację użytkownika | 1d | 2024-03-25 | 2024-03-25 | 0d |
| 45 | 2.2 | **Implementacja** | 0d | 2024-03-25 | 2024-03-25 | 1d |
| 46 | 2.2.1 | **Interfejs WWW** | 0d | 2024-03-25 | 2024-03-25 | 1d |
| 47 |  | Kodowanie strony internetowej | 1d | 2024-03-25 | 2024-03-25 |  |
| 48 |  | Przeprowadzenie testów jednostkowych | 1d | 2024-03-25 | 2024-03-25 |  |
| 49 |  | Przejrzenie projektu / funkcjonalności strony internetowej | 1d | 2024-03-25 | 2024-03-25 |  |
| 50 |  | Uzyskaj akceptację użytkownika | 1d | 2024-03-25 | 2024-03-25 |  |
| 51 | 2.3 | **Interfejs WWW** | 0d | 2024-03-25 | 2024-03-25 | 1d |
| 52 |  | Sprawdź projekt i funkcjonalność | 1d | 2024-03-25 | 2024-03-25 |  |
| 53 |  | Przeprowadzenie testów jednostkowych | 1d | 2024-03-25 | 2024-03-25 |  |
| 54 | 2.4 | **Zapewnienie jakości** | 0d | 2024-03-25 | 2024-03-25 | 1d |
| 55 | 2.4.1 | **Raporty** | 0d | 2024-03-25 | 2024-03-25 | 1d |
| 56 |  | Sprawdź projekt i funkcjonalność | 1d | 2024-03-25 | 2024-03-25 |  |
| 57 |  | Raportuj test integracji | 1d | 2024-03-25 | 2024-03-25 |  |
| 59 | 3 | **Iteracja 3** | 1d | 2024-03-25 | 2024-03-25 | 0d |
| 60 | 3.1 | **Projektowanie** | 1d | 2024-03-25 | 2024-03-25 | 0d |
| 61 | 3.1.1 | **Raporty** | 1d | 2024-03-25 | 2024-03-25 | 0d |
| 62 | 3.1.1.1 | **Zbierz wymagania użytkownika** | 1d | 2024-03-25 | 2024-03-25 | 0d |
| 63 |  | Określ elementy importu / eksportu danych | 1d | 2024-03-25 | 2024-03-25 | 0d |
| 64 |  | Zdefiniuj potrzeby użytkownika | 1d | 2024-03-25 | 2024-03-25 | 0d |
| 65 |  | Zdefiniuj potrzeby informatyczne | 1d | 2024-03-25 | 2024-03-25 | 0d |
| 66 |  | Interfejsy projektowe | 1d | 2024-03-25 | 2024-03-25 |  |
| 67 |  | Uzyskaj akceptację zespołu | 1d | 2024-03-25 | 2024-03-25 | 0d |
| 68 | 3.2 | **Implementacja** | 0d | 2024-03-25 | 2024-03-25 | 1d |
| 69 | 3.2.1 | **Interfejsy międzymodułowe** | 0d | 2024-03-25 | 2024-03-25 | 1d |
| 70 |  | Zbuduj interfejsy | 1d | 2024-03-25 | 2024-03-25 |  |
| 71 |  | Przeprowadź test jednostkowy funkcji importu / eksportu | 1d | 2024-03-25 | 2024-03-25 |  |
| 72 |  | Uzyskaj akceptację zespołu | 1d | 2024-03-25 | 2024-03-25 |  |

| ID | WBS | Task | Duration | Start | Finish | Total float |
| --- | --- | --- | --- | --- | --- | --- |
| 73 | 3.3 | **Zapewnienie jakości** | 0d | 2024-03-25 | 2024-03-25 | 1d |
| 74 | 3.3.1 | **Interfejs WWW** | 0d | 2024-03-25 | 2024-03-25 | 1d |
| 75 |  | Wykonaj test integracji | 1d | 2024-03-25 | 2024-03-25 |  |
| 76 |  | Wykonaj test akceptacji użytkownika | 1d | 2024-03-25 | 2024-03-25 |  |
| 77 |  | Uzyskaj akceptację użytkownika | 1d | 2024-03-25 | 2024-03-25 |  |
| 78 | 3.3.2 | **Baza danych SQL** | 0d | 2024-03-25 | 2024-03-25 | 1d |
| 79 |  | Wykonaj test integracji | 1d | 2024-03-25 | 2024-03-25 |  |
| 80 |  | Wykonaj test akceptacji użytkownika | 1d | 2024-03-25 | 2024-03-25 |  |
| 81 |  | Uzyskaj akceptację użytkownika | 1d | 2024-03-25 | 2024-03-25 |  |
| 82 | 3.3.3 | **Interfejsy** | 0d | 2024-03-25 | 2024-03-25 | 1d |
| 83 |  | Sprawdź projekt i funkcjonalność | 1d | 2024-03-25 | 2024-03-25 |  |
| 84 |  | Wykonaj test integracji | 1d | 2024-03-25 | 2024-03-25 |  |
| 85 |  | Wykonaj test akceptacji użytkownika | 1d | 2024-03-25 | 2024-03-25 |  |
| 86 |  | Uzyskaj akceptację użytkownika | 1d | 2024-03-25 | 2024-03-25 |  |
| 87 | 3.4 | **Zapewnienie jakości** | 0d | 2024-03-25 | 2024-03-25 | 1d |
| 88 | 3.4.1 | **Raporty** | 0d | 2024-03-25 | 2024-03-25 | 1d |
| 89 |  | Sprawdź projekt i funkcjonalność | 1d | 2024-03-25 | 2024-03-25 |  |
| 90 |  | Raportuj test integracji | 1d | 2024-03-25 | 2024-03-25 |  |
| 91 |  | Raportuj test akceptacji użytkownika | 1d | 2024-03-25 | 2024-03-25 |  |
| 92 |  | Uzyskaj akceptację użytkownika | 1d | 2024-03-25 | 2024-03-25 |  |
| 94 | 4 | **Iteracja 4** | 0d | 2024-03-25 | 2024-03-25 | 1d |
| 95 | 4.1 | **Projektowanie** | 0d | 2024-03-25 | 2024-03-25 | 1d |
| 96 | 4.1.1 | **Informacja zwrotna** | 0d | 2024-03-25 | 2024-03-25 | 1d |
| 97 |  | Zdefiniowanie wymaganych modyfikacji | 1d | 2024-03-25 | 2024-03-25 |  |
| 98 |  | Akceptacja użytkownika | 1d | 2024-03-25 | 2024-03-25 |  |
| 99 | 4.2 | **Implementacja** | 0d | 2024-03-25 | 2024-03-25 | 1d |
| 100 |  | Implementacja modyfikacji określonych przez użytkownika | 1d? | 2024-03-25 | 2024-03-25 |  |
| 101 |  | Wykonaj test integracji | 1d | 2024-03-25 | 2024-03-25 |  |
| 102 |  | Wykonaj test akceptacji użytkownika | 1d | 2024-03-25 | 2024-03-25 |  |
| 103 |  | Uzyskaj akceptację użytkownika | 1d | 2024-03-25 | 2024-03-25 |  |
| 104 | 4.3 | **Zapewnienie jakości** | 0d | 2024-03-25 | 2024-03-25 | 1d |
| 105 | 4.3.1 | **Raporty** | 0d | 2024-03-25 | 2024-03-25 | 1d |
| 106 |  | Sprawdź projekt i funkcjonalność | 1d | 2024-03-25 | 2024-03-25 |  |
| 107 |  | Raportuj test integracji | 1d | 2024-03-25 | 2024-03-25 |  |
| 108 |  | Raportuj test akceptacji użytkownika | 1d | 2024-03-25 | 2024-03-25 |  |
| 109 |  | Uzyskaj akceptację użytkownika | 1d | 2024-03-25 | 2024-03-25 |  |

## Version 2 (saved 2024-04-23, file lista2 — Poprawione iteracje.mpp)

Note of the change: Poprawiony podział na iteracje

Last finish 2024-03-25 → 2024-04-09 (+15d).

Added:

| ID | Task | Duration | Start | Finish |
| --- | --- | --- | --- | --- |
| 1 | **Iteracja 1 - Definicja wymagań** | 1d | 2024-03-25 | 2024-03-25 |
| 44 | **Interfejsy podsystemów** | 1d | 2024-03-25 | 2024-03-25 |
| 67 | **Iteracja 4 - Interfejs użytkownika** | 1d | 2024-03-25 | 2024-03-25 |
| 90 | **Iteracja 5 - Integracja modułów** | 1d | 2024-03-25 | 2024-03-25 |
| 91 | **Zapewnienie jakości** | 1d | 2024-03-25 | 2024-03-25 |
| 100 | **Interfejsy** | 1d | 2024-03-25 | 2024-03-25 |
| 106 | **Implementacja** | 1d | 2024-03-25 | 2024-03-25 |
| 107 | Wprowadzenie poprawek na podstawie wyników testów integracyjnych | 1d | 2024-03-25 | 2024-03-25 |
| 108 | **Zapewnienie jakości** | 1d | 2024-03-25 | 2024-03-25 |
| 109 | **Interfejs WWW** | 1d | 2024-03-25 | 2024-03-25 |
| 111 | **Baza danych SQL** | 1d | 2024-03-25 | 2024-03-25 |
| 112 | Wykonaj test akceptacji użytkownika | 1d | 2024-03-25 | 2024-03-25 |
| 113 | **Interfejsy** | 1d | 2024-03-25 | 2024-03-25 |
| 114 | Wykonaj test akceptacji użytkownika | 1d | 2024-03-25 | 2024-03-25 |
| 115 | **Raporty** | 1d | 2024-03-25 | 2024-03-25 |
| 129 | Wykonaj test akceptacji użytkownika | 1d | 2024-03-25 | 2024-03-25 |

Removed: 37 Iteracja 2; 62 Zbierz wymagania użytkownika; 106 Sprawdź projekt i funkcjonalność; 107 Raportuj test integracji

Changed:

| ID | Task | Finish | Duration | Total float | Other |
| --- | --- | --- | --- | --- | --- |
| 4 | **Zbierz wymagania użytkownika** |  | 0d → 1d | 1d → 11d |  |
| 14 | **Iteracja 2 - Baza danych** | 2024-03-25 → 2024-04-09 (+15d) | 1d → 12d? |  | was named Iteracja 1 |
| 15 | **Projektowanie** | 2024-03-25 → 2024-04-09 (+15d) | 1d → 12d |  |  |
| 16 | **Interfejs użytkownika internetowego** | 2024-03-25 → 2024-04-09 (+15d) | 0d → 12d | 1d → 0d |  |
| 17 | **Specyfikacja techniczna** | 2024-03-25 → 2024-04-09 (+15d) | 0d → 12d | 1d → 0d |  |
| 18 | Opracuj specyfikacje techniczne | 2024-03-25 → 2024-03-29 (+4d) | 1d → 5d | none → 7d |  |
| 19 | Zapoznaj się z specyfikacjami technicznymi z zespołem projektowym | 2024-03-25 → 2024-04-09 (+15d) | 1d → 12d | none → 0d |  |
| 20 | Uzyskaj akceptację zespołu | 2024-03-25 → 2024-03-26 (+1d) | 1d → 2d | none → 10d |  |
| 21 | **Baza danych SQL** | 2024-03-25 → 2024-03-29 (+4d) | 0d → 5d | 1d → 7d |  |
| 22 | **Specyfikacja techniczna** | 2024-03-25 → 2024-03-29 (+4d) | 0d → 5d | 1d → 7d |  |
| 23 | Opracuj specyfikacje techniczne | 2024-03-25 → 2024-03-29 (+4d) | 1d? → 5d | none → 7d |  |
| 24 | Zapoznaj się z specyfikacjami technicznymi z zespołem projektowym | 2024-03-25 → 2024-03-28 (+3d) | 1d? → 4d | none → 8d |  |
| 25 | Uzyskaj akceptację zespołu | 2024-03-25 → 2024-03-26 (+1d) | 1d → 2d | none → 10d |  |
| 32 | **Zapewnienie jakości** |  | 0d → 1d? | 1d → 11d |  |
| 33 | **Baza danych SQL** |  | 0d → 1d? | 1d → 11d |  |
| 36 | **Zapewnienie jakości** |  | 0d → 1d | 1d → 11d |  |
| 37 | **Raporty** |  | 0d → 1d | 1d → 11d |  |
| 42 | **Iteracja 3 - Komunikacja między modułami** |  |  | 0d → 11d | was named Iteracja 3 |
| 50 | **Implementacja** |  | 0d → 1d | 1d → 11d |  |
| 51 | **Interfejsy międzymodułowe** |  | 0d → 1d | 1d → 11d |  |
| 55 | **Zapewnienie jakości** |  | 0d → 1d | 1d → 11d |  |
| 56 | **Interfejsy** |  | 0d → 1d | 1d → 11d |  |
| 58 | **Zapewnienie jakości** |  | 0d → 1d | 1d → 11d |  |
| 59 | **Raporty** |  | 0d → 1d | 1d → 11d |  |
| 75 | **Implementacja** |  | 0d → 1d | 1d → 11d |  |
| 76 | **Interfejs WWW** |  | 0d → 1d | 1d → 11d |  |
| 81 | **Interfejs WWW** |  | 0d → 1d | 1d → 11d |  |
| 84 | **Zapewnienie jakości** |  | 0d → 1d | 1d → 11d |  |
| 85 | **Raporty** |  | 0d → 1d | 1d → 11d |  |
| 92 | **Interfejs WWW** |  | 0d → 1d | 1d → 11d |  |
| 96 | **Baza danych SQL** |  | 0d → 1d | 1d → 11d |  |
| 120 | **Iteracja 6 - Wprowadzenie projektu** |  | 0d → 1d? | 1d → 11d | was named Iteracja 4 |
| 121 | **Projektowanie** |  | 0d → 1d | 1d → 11d |  |
| 122 | **Informacja zwrotna** |  | 0d → 1d | 1d → 11d |  |
| 125 | **Implementacja** |  | 0d → 1d? | 1d → 11d |  |
| 127 | **Zapewnienie jakości** |  | 0d → 1d | 1d → 11d |  |
| 131 | **Raporty** |  | 0d → 1d | 1d → 11d |  |

## Version 3 (saved 2024-04-23, file lista2.mpp)

Note of the change: dodane zależności między zadaniami

Last finish 2024-04-09 → 2024-06-18 (+70d).

Removed: 36 Zapewnienie jakości; 58 Zapewnienie jakości; 61 Raportuj test integracji; 62 Raportuj test akceptacji użytkownika; 63 Uzyskaj akceptację użytkownika; 94 Wykonaj test akceptacji użytkownika; 95 Uzyskaj akceptację użytkownika; 98 Wykonaj test akceptacji użytkownika; 99 Uzyskaj akceptację użytkownika; 102 Wykonaj test akceptacji użytkownika; 103 Uzyskaj akceptację użytkownika

Changed:

| ID | Task | Start | Finish | Duration | Total float | Predecessors |
| --- | --- | --- | --- | --- | --- | --- |
| 1 | **Iteracja 1 - Definicja wymagań** |  | 2024-03-25 → 2024-03-29 (+4d) | 1d → 5d | 11d → 3d |  |
| 2 | **Raporty** |  | 2024-03-25 → 2024-03-29 (+4d) | 1d → 5d | 11d → 3d |  |
| 3 | **Specyfikacje funkcjonalne** |  | 2024-03-25 → 2024-03-29 (+4d) | 1d → 5d | 11d → 3d |  |
| 6 | Zdefiniuj częstotliwość wywoływania strony |  |  |  | 11d → 3d | none → 5SS |
| 7 | Zdefiniuj odbiorców |  |  |  | 11d → 3d | none → 6SS |
| 8 | Raporty z wykonanych projektów | 2024-03-25 → 2024-03-26 (+1d) | 2024-03-25 → 2024-03-26 (+1d) |  | 11d → 3d | none → 4 |
| 9 | Zdefiniuj raport z zespołem projektowym | 2024-03-25 → 2024-03-27 (+2d) | 2024-03-25 → 2024-03-27 (+2d) |  | 11d → 3d | none → 8 |
| 10 | Dostarcz ostateczne specyfikacje funkcjonalne | 2024-03-25 → 2024-03-28 (+3d) | 2024-03-25 → 2024-03-28 (+3d) |  | 11d → 3d | none → 9 |
| 11 | Uzyskaj akceptację użytkownika | 2024-03-25 → 2024-03-29 (+4d) | 2024-03-25 → 2024-03-29 (+4d) |  | 11d → 3d | none → 10 |
| 14 | **Iteracja 2 - Baza danych** | 2024-03-25 → 2024-04-01 (+7d) | 2024-04-09 → 2024-05-06 (+27d) | 12d? → 26d? | 0d → 3d | none → 1 |
| 15 | **Projektowanie** | 2024-03-25 → 2024-04-01 (+7d) | 2024-04-09 → 2024-04-25 (+16d) | 12d → 19d | 0d → 3d |  |
| 16 | **Interfejs użytkownika internetowego** | 2024-03-25 → 2024-04-01 (+7d) | 2024-04-09 → 2024-04-25 (+16d) | 12d → 19d | 0d → 3d |  |
| 17 | **Specyfikacja techniczna** | 2024-03-25 → 2024-04-01 (+7d) | 2024-04-09 → 2024-04-25 (+16d) | 12d → 19d | 0d → 3d |  |
| 18 | Opracuj specyfikacje techniczne | 2024-03-25 → 2024-04-01 (+7d) | 2024-03-29 → 2024-04-05 (+7d) |  | 7d → 3d |  |
| 19 | Zapoznaj się z specyfikacjami technicznymi z zespołem projektowym | 2024-03-25 → 2024-04-08 (+14d) | 2024-04-09 → 2024-04-23 (+14d) |  | 0d → 3d | none → 18 |
| 20 | Uzyskaj akceptację zespołu | 2024-03-25 → 2024-04-24 (+30d) | 2024-03-26 → 2024-04-25 (+30d) |  | 10d → 3d | none → 19 |
| 21 | **Baza danych SQL** | 2024-03-25 → 2024-04-01 (+7d) | 2024-03-29 → 2024-04-25 (+27d) | 5d → 19d | 7d → 3d |  |
| 22 | **Specyfikacja techniczna** | 2024-03-25 → 2024-04-01 (+7d) | 2024-03-29 → 2024-04-25 (+27d) | 5d → 19d | 7d → 3d |  |
| 23 | Opracuj specyfikacje techniczne | 2024-03-25 → 2024-04-01 (+7d) | 2024-03-29 → 2024-04-05 (+7d) |  | 7d → 8d | none → 18SS |
| 24 | Zapoznaj się z specyfikacjami technicznymi z zespołem projektowym | 2024-03-25 → 2024-04-08 (+14d) | 2024-03-28 → 2024-04-11 (+14d) |  |  | none → 23 |
| 25 | Uzyskaj akceptację zespołu | 2024-03-25 → 2024-04-24 (+30d) | 2024-03-26 → 2024-04-25 (+30d) |  | 10d → 3d | none → 20FF, 24 |
| 26 | **Implementacja** | 2024-03-25 → 2024-04-26 (+32d) | 2024-03-25 → 2024-05-01 (+37d) | 1d → 4d | 11d → 3d | none → 15 |
| 27 | **Baza danych SQL** | 2024-03-25 → 2024-04-26 (+32d) | 2024-03-25 → 2024-05-01 (+37d) | 1d → 4d | 11d → 3d |  |
| 28 | Identyfikuj relacje | 2024-03-25 → 2024-04-26 (+32d) | 2024-03-25 → 2024-04-26 (+32d) |  | 11d → 3d |  |
| 29 | Tworzenie tabel bazy danych | 2024-03-25 → 2024-04-29 (+35d) | 2024-03-25 → 2024-04-29 (+35d) |  | 11d → 3d | none → 28 |
| 30 | Przegląd tabel z zespołem projektowym | 2024-03-25 → 2024-04-30 (+36d) | 2024-03-25 → 2024-04-30 (+36d) |  | 11d → 3d | none → 29 |
| 31 | Uzyskaj akceptację zespołu | 2024-03-25 → 2024-05-01 (+37d) | 2024-03-25 → 2024-05-01 (+37d) |  | 11d → 3d | none → 30 |
| 32 | **Zapewnienie jakości** | 2024-03-25 → 2024-05-02 (+38d) | 2024-03-25 → 2024-05-03 (+39d) | 1d? → 2d? | 11d → 3d | none → 26 |
| 33 | **Baza danych SQL** | 2024-03-25 → 2024-05-02 (+38d) | 2024-03-25 → 2024-05-03 (+39d) | 1d? → 2d? | 11d → 3d |  |
| 34 | Weryfikuj elementy projektu / danych | 2024-03-25 → 2024-05-02 (+38d) | 2024-03-25 → 2024-05-02 (+38d) |  | 11d → 3d |  |
| 35 | Zweryfikuj relacje | 2024-03-25 → 2024-05-03 (+39d) | 2024-03-25 → 2024-05-03 (+39d) |  | 11d → 3d | none → 34 |
| 36 | **Raporty** | 2024-03-25 → 2024-05-06 (+42d) | 2024-03-25 → 2024-05-06 (+42d) |  | 11d → 3d |  |
| 37 | Sprawdź projekt i funkcjonalność | 2024-03-25 → 2024-05-06 (+42d) | 2024-03-25 → 2024-05-06 (+42d) |  | 11d → 3d | none → 35 |
| 41 | **Iteracja 3 - Komunikacja między modułami** | 2024-03-25 → 2024-05-07 (+43d) | 2024-03-25 → 2024-05-16 (+52d) | 1d → 8d | 11d → 3d | none → 14 |
| 42 | **Projektowanie** | 2024-03-25 → 2024-05-07 (+43d) | 2024-03-25 → 2024-05-09 (+45d) | 1d → 3d | 11d → 3d |  |
| 43 | **Interfejsy podsystemów** | 2024-03-25 → 2024-05-07 (+43d) | 2024-03-25 → 2024-05-09 (+45d) | 1d → 3d | 11d → 3d |  |
| 44 | **Określ elementy importu / eksportu danych** | 2024-03-25 → 2024-05-07 (+43d) | 2024-03-25 → 2024-05-07 (+43d) |  | 11d → 3d |  |
| 45 | Zdefiniuj potrzeby użytkownika | 2024-03-25 → 2024-05-07 (+43d) | 2024-03-25 → 2024-05-07 (+43d) |  | 11d → 3d |  |
| 46 | Zdefiniuj potrzeby informatyczne | 2024-03-25 → 2024-05-07 (+43d) | 2024-03-25 → 2024-05-07 (+43d) |  | 11d → 3d | none → 45SS |
| 47 | Interfejsy projektowe | 2024-03-25 → 2024-05-08 (+44d) | 2024-03-25 → 2024-05-08 (+44d) |  | 11d → 3d | none → 44 |
| 48 | Uzyskaj akceptację zespołu | 2024-03-25 → 2024-05-09 (+45d) | 2024-03-25 → 2024-05-09 (+45d) |  | 11d → 3d | none → 47 |
| 49 | **Implementacja** | 2024-03-25 → 2024-05-10 (+46d) | 2024-03-25 → 2024-05-14 (+50d) | 1d → 3d | 11d → 3d | none → 42 |
| 50 | **Interfejsy międzymodułowe** | 2024-03-25 → 2024-05-10 (+46d) | 2024-03-25 → 2024-05-14 (+50d) | 1d → 3d | 11d → 3d |  |
| 51 | Zbuduj interfejsy | 2024-03-25 → 2024-05-10 (+46d) | 2024-03-25 → 2024-05-10 (+46d) |  | 11d → 3d |  |
| 52 | Przeprowadź test jednostkowy funkcji importu / eksportu | 2024-03-25 → 2024-05-13 (+49d) | 2024-03-25 → 2024-05-13 (+49d) |  | 11d → 3d | none → 51 |
| 53 | Uzyskaj akceptację zespołu | 2024-03-25 → 2024-05-14 (+50d) | 2024-03-25 → 2024-05-14 (+50d) |  | 11d → 3d | none → 52 |
| 54 | **Zapewnienie jakości** | 2024-03-25 → 2024-05-15 (+51d) | 2024-03-25 → 2024-05-16 (+52d) | 1d → 2d | 11d → 3d | none → 49 |
| 55 | **Interfejsy** | 2024-03-25 → 2024-05-15 (+51d) | 2024-03-25 → 2024-05-15 (+51d) |  | 11d → 3d |  |
| 56 | Sprawdź projekt i funkcjonalność | 2024-03-25 → 2024-05-15 (+51d) | 2024-03-25 → 2024-05-15 (+51d) |  | 11d → 3d |  |
| 57 | **Raporty** | 2024-03-25 → 2024-05-16 (+52d) | 2024-03-25 → 2024-05-16 (+52d) |  | 11d → 3d | none → 55 |
| 58 | Sprawdź projekt i funkcjonalność | 2024-03-25 → 2024-05-16 (+52d) | 2024-03-25 → 2024-05-16 (+52d) |  | 11d → 3d |  |
| 62 | **Iteracja 4 - Interfejs użytkownika** | 2024-03-25 → 2024-05-17 (+53d) | 2024-03-25 → 2024-05-30 (+66d) | 1d → 10d | 11d → 3d | none → 41 |
| 63 | **Projektowanie** | 2024-03-25 → 2024-05-17 (+53d) | 2024-03-25 → 2024-05-22 (+58d) | 1d → 4d | 11d → 3d |  |
| 64 | **Interfejs użytkownika internetowego** | 2024-03-25 → 2024-05-17 (+53d) | 2024-03-25 → 2024-05-22 (+58d) | 1d → 4d | 11d → 3d |  |
| 65 | **Specyfikacje funkcjonalne** | 2024-03-25 → 2024-05-17 (+53d) | 2024-03-25 → 2024-05-22 (+58d) | 1d → 4d | 11d → 3d |  |
| 66 | Utwórz makiety interfejsu użytkownika | 2024-03-25 → 2024-05-17 (+53d) | 2024-03-25 → 2024-05-17 (+53d) |  | 11d → 3d |  |
| 67 | Przeprowadź przegląd projektu | 2024-03-25 → 2024-05-20 (+56d) | 2024-03-25 → 2024-05-20 (+56d) |  | 11d → 3d | none → 66 |
| 68 | Dostarcz ostateczne specyfikacje funkcjonalne | 2024-03-25 → 2024-05-21 (+57d) | 2024-03-25 → 2024-05-21 (+57d) |  | 11d → 3d | none → 67 |
| 69 | Uzyskaj akceptację użytkownika | 2024-03-25 → 2024-05-22 (+58d) | 2024-03-25 → 2024-05-22 (+58d) |  | 11d → 3d | none → 68 |
| 70 | **Implementacja** | 2024-03-25 → 2024-05-23 (+59d) | 2024-03-25 → 2024-05-27 (+63d) | 1d → 3d | 11d → 3d | none → 63 |
| 71 | **Interfejs WWW** | 2024-03-25 → 2024-05-23 (+59d) | 2024-03-25 → 2024-05-27 (+63d) | 1d → 3d | 11d → 3d |  |
| 72 | Kodowanie strony internetowej | 2024-03-25 → 2024-05-23 (+59d) | 2024-03-25 → 2024-05-23 (+59d) |  | 11d → 3d |  |
| 73 | Przeprowadzenie testów jednostkowych | 2024-03-25 → 2024-05-23 (+59d) | 2024-03-25 → 2024-05-23 (+59d) |  | 11d → 3d | none → 72FF |
| 74 | Przejrzenie projektu / funkcjonalności strony internetowej | 2024-03-25 → 2024-05-24 (+60d) | 2024-03-25 → 2024-05-24 (+60d) |  | 11d → 3d | none → 73 |
| 75 | Uzyskaj akceptację użytkownika | 2024-03-25 → 2024-05-27 (+63d) | 2024-03-25 → 2024-05-27 (+63d) |  | 11d → 3d | none → 74 |
| 76 | **Zapewnienie jakości** | 2024-03-25 → 2024-05-28 (+64d) | 2024-03-25 → 2024-05-30 (+66d) | 1d → 3d | 11d → 3d | none → 70 |
| 77 | **Interfejs WWW** | 2024-03-25 → 2024-05-28 (+64d) | 2024-03-25 → 2024-05-29 (+65d) | 1d → 2d | 11d → 3d |  |
| 78 | Sprawdź projekt i funkcjonalność | 2024-03-25 → 2024-05-28 (+64d) | 2024-03-25 → 2024-05-28 (+64d) |  | 11d → 3d |  |
| 79 | Przeprowadzenie testów jednostkowych | 2024-03-25 → 2024-05-29 (+65d) | 2024-03-25 → 2024-05-29 (+65d) |  | 11d → 3d | none → 78 |
| 80 | **Raporty** | 2024-03-25 → 2024-05-30 (+66d) | 2024-03-25 → 2024-05-30 (+66d) |  | 11d → 3d | none → 77 |

| ID | Task | Start | Finish | Duration | Total float | Predecessors | Other |
| --- | --- | --- | --- | --- | --- | --- | --- |
| 81 | Sprawdź projekt i funkcjonalność | 2024-03-25 → 2024-05-30 (+66d) | 2024-03-25 → 2024-05-30 (+66d) |  | 11d → 3d |  |  |
| 85 | **Iteracja 5 - Integracja modułów** | 2024-03-25 → 2024-05-31 (+67d) | 2024-03-25 → 2024-06-05 (+72d) | 1d → 4d | 11d → 3d | none → 62 |  |
| 86 | **Zapewnienie jakości** | 2024-03-25 → 2024-05-31 (+67d) | 2024-03-25 → 2024-06-03 (+70d) | 1d → 2d | 11d → 3d |  |  |
| 87 | **Interfejs WWW** | 2024-03-25 → 2024-05-31 (+67d) | 2024-03-25 → 2024-05-31 (+67d) |  | 11d → 4d |  |  |
| 88 | Wykonaj test integracji | 2024-03-25 → 2024-05-31 (+67d) | 2024-03-25 → 2024-05-31 (+67d) |  | 11d → 4d |  |  |
| 89 | **Baza danych SQL** | 2024-03-25 → 2024-05-31 (+67d) | 2024-03-25 → 2024-05-31 (+67d) |  | 11d → 4d | none → 87SS |  |
| 90 | Wykonaj test integracji | 2024-03-25 → 2024-05-31 (+67d) | 2024-03-25 → 2024-05-31 (+67d) |  | 11d → 4d |  |  |
| 91 | **Interfejsy** | 2024-03-25 → 2024-05-31 (+67d) | 2024-03-25 → 2024-05-31 (+67d) |  | 11d → 3d | none → 89SS |  |
| 92 | Wykonaj test integracji | 2024-03-25 → 2024-05-31 (+67d) | 2024-03-25 → 2024-05-31 (+67d) |  | 11d → 3d |  |  |
| 93 | **Raporty** | 2024-03-25 → 2024-06-03 (+70d) | 2024-03-25 → 2024-06-03 (+70d) |  | 11d → 3d | none → 91 |  |
| 94 | Raportuj test integracji | 2024-03-25 → 2024-06-03 (+70d) | 2024-03-25 → 2024-06-03 (+70d) |  | 11d → 3d |  |  |
| 95 | **Implementacja** | 2024-03-25 → 2024-06-04 (+71d) | 2024-03-25 → 2024-06-04 (+71d) |  | 11d → 3d | none → 86 |  |
| 96 | Wprowadzenie poprawek na podstawie wyników testów integracyjnych | 2024-03-25 → 2024-06-04 (+71d) | 2024-03-25 → 2024-06-04 (+71d) |  | 11d → 3d |  |  |
| 97 | **Zapewnienie jakości** | 2024-03-25 → 2024-06-05 (+72d) | 2024-03-25 → 2024-06-05 (+72d) |  | 11d → 3d | none → 95 |  |
| 98 | **Interfejs WWW** | 2024-03-25 → 2024-06-05 (+72d) | 2024-03-25 → 2024-06-05 (+72d) |  | 11d → 3d |  |  |
| 99 | Wykonaj test akceptacji użytkownika | 2024-03-25 → 2024-06-05 (+72d) | 2024-03-25 → 2024-06-05 (+72d) |  | 11d → 3d |  |  |
| 100 | **Baza danych SQL** | 2024-03-25 → 2024-06-05 (+72d) | 2024-03-25 → 2024-06-05 (+72d) |  | 11d → 3d | none → 98SS |  |
| 101 | Wykonaj test akceptacji użytkownika | 2024-03-25 → 2024-06-05 (+72d) | 2024-03-25 → 2024-06-05 (+72d) |  | 11d → 3d |  |  |
| 102 | **Interfejsy** | 2024-03-25 → 2024-06-05 (+72d) | 2024-03-25 → 2024-06-05 (+72d) |  | 11d → 3d | none → 100SS |  |
| 103 | Wykonaj test akceptacji użytkownika | 2024-03-25 → 2024-06-05 (+72d) | 2024-03-25 → 2024-06-05 (+72d) |  | 11d → 3d |  |  |
| 104 | **Raporty** | 2024-03-25 → 2024-06-05 (+72d) | 2024-03-25 → 2024-06-05 (+72d) |  | 11d → 3d | none → 102SS |  |
| 105 | Raportuj test akceptacji użytkownika | 2024-03-25 → 2024-06-05 (+72d) | 2024-03-25 → 2024-06-05 (+72d) |  | 11d → 3d |  |  |
| 109 | **Iteracja 6 - Wprowadzenie projektu** | 2024-03-25 → 2024-06-06 (+73d) | 2024-03-25 → 2024-06-18 (+85d) | 1d? → 9d? | 11d → 0d | none → 85 |  |
| 110 | **Projektowanie** | 2024-03-25 → 2024-06-06 (+73d) | 2024-03-25 → 2024-06-07 (+74d) | 1d → 2d | 11d → 3d |  |  |
| 111 | **Informacja zwrotna** | 2024-03-25 → 2024-06-06 (+73d) | 2024-03-25 → 2024-06-07 (+74d) | 1d → 2d | 11d → 3d |  |  |
| 112 | Zdefiniowanie wymaganych modyfikacji | 2024-03-25 → 2024-06-06 (+73d) | 2024-03-25 → 2024-06-06 (+73d) |  | 11d → 3d |  |  |
| 113 | Akceptacja użytkownika | 2024-03-25 → 2024-06-07 (+74d) | 2024-03-25 → 2024-06-07 (+74d) |  | 11d → 3d | none → 112 |  |
| 114 | **Implementacja** | 2024-03-25 → 2024-06-10 (+77d) | 2024-03-25 → 2024-06-10 (+77d) |  | 11d → 3d | none → 110 |  |
| 115 | Implementacja modyfikacji określonych przez użytkownika | 2024-03-25 → 2024-06-10 (+77d) | 2024-03-25 → 2024-06-10 (+77d) |  | 11d → 3d |  |  |
| 116 | **Zapewnienie jakości** | 2024-03-25 → 2024-06-11 (+78d) | 2024-03-25 → 2024-06-17 (+84d) | 1d → 5d | 11d → 0d | none → 114 |  |
| 117 | Wykonaj test integracji | 2024-03-25 → 2024-06-11 (+78d) | 2024-03-25 → 2024-06-11 (+78d) |  | 11d → 3d |  |  |
| 118 | Wykonaj test akceptacji użytkownika | 2024-03-25 → 2024-06-13 (+80d) | 2024-03-25 → 2024-06-14 (+81d) |  | 11d → 2d | none → 119SF, 117 |  |
| 119 | Uzyskaj akceptację użytkownika | 2024-03-25 → 2024-06-14 (+81d) | 2024-03-25 → 2024-06-17 (+84d) | 1d → 2d | 11d → 0d |  | constraint none → start no earlier than 2024-06-14 |
| 120 | **Raporty** | 2024-03-25 → 2024-06-18 (+85d) | 2024-03-25 → 2024-06-18 (+85d) |  | 11d → 0d | none → 116 |  |
| 121 | Uzyskaj akceptację użytkownika | 2024-03-25 → 2024-06-18 (+85d) | 2024-03-25 → 2024-06-18 (+85d) |  | 11d → 0d |  |  |

## Version 4 (data date 2024-05-06, saved 2024-05-06, file lista2 — Poprawione iteracje.mpp)

Note of the change: zasoby done

Last finish 2024-06-18 → 2024-06-26 (+8d).

Changed:

| ID | Task | Start | Finish | Duration | Total float | Other |
| --- | --- | --- | --- | --- | --- | --- |
| 1 | **Iteracja 1 - Definicja wymagań** |  |  | 5d → 8d | 3d → 0.6d | resources none → Kierownik Projektu; Administrator Baz Danych; Programista; Tester Oprogramowania |
| 2 | **Raporty** |  |  | 5d → 8d | 3d → 0.6d | resources none → Kierownik Projektu |
| 3 | **Specyfikacje funkcjonalne** |  |  | 5d → 8d | 3d → 0.6d | resources none → Kierownik Projektu; Administrator Baz Danych; Programista; Tester Oprogramowania |
| 4 | **Zbierz wymagania użytkownika** |  |  | 1d → 1.6d | 3d → 0.6d | resources none → Kierownik Projektu; Administrator Baz Danych; Programista |
| 5 | Zdefiniuj elementy danych |  |  | 1d → 1.6d | 3d → 0.6d | resources none → Kierownik Projektu; Administrator Baz Danych |
| 6 | Zdefiniuj częstotliwość wywoływania strony |  |  | 1d → 1.6d | 3d → 0.6d | resources none → Kierownik Projektu; Administrator Baz Danych; Programista |
| 7 | Zdefiniuj odbiorców |  |  | 1d → 1.6d | 3d → 0.6d | resources none → Kierownik Projektu |
| 8 | Raporty z wykonanych projektów |  |  | 1d → 1.6d | 3d → 0.6d | resources none → Kierownik Projektu |
| 9 | Zdefiniuj raport z zespołem projektowym |  |  | 1d → 1.6d | 3d → 0.6d | resources none → Kierownik Projektu; Administrator Baz Danych; Programista; Tester Oprogramowania |
| 10 | Dostarcz ostateczne specyfikacje funkcjonalne |  |  | 1d → 1.6d | 3d → 0.6d | resources none → Kierownik Projektu |
| 11 | Uzyskaj akceptację użytkownika |  |  | 1d → 1.6d | 3d → 0.6d | resources none → Kierownik Projektu |
| 14 | **Iteracja 2 - Baza danych** |  | 2024-05-06 → 2024-05-08 (+2d) | 26d? → 44.2d? | 3d → 0.2d | resources none → Administrator Baz Danych; Kierownik Projektu; Programista; Tester Oprogramowania; Specjalista ds. Zapewnienia Jakości |
| 15 | **Projektowanie** |  |  | 19d → 30.4d | 3d → 0.6d | resources none → Administrator Baz Danych; Kierownik Projektu; Programista; Tester Oprogramowania |
| 16 | **Interfejs użytkownika internetowego** |  |  | 19d → 30.4d | 3d → 0.6d | resources none → Administrator Baz Danych; Kierownik Projektu; Programista; Tester Oprogramowania |
| 17 | **Specyfikacja techniczna** |  |  | 19d → 30.4d | 3d → 0.6d | resources none → Administrator Baz Danych; Kierownik Projektu; Programista; Tester Oprogramowania |
| 18 | Opracuj specyfikacje techniczne |  |  | 5d → 8d | 3d → 0.6d | resources none → Administrator Baz Danych; Kierownik Projektu |
| 19 | Zapoznaj się z specyfikacjami technicznymi z zespołem projektowym |  |  | 12d → 19.2d | 3d → 0.6d | resources none → Administrator Baz Danych; Kierownik Projektu; Programista; Tester Oprogramowania |
| 20 | Uzyskaj akceptację zespołu |  |  | 2d → 3.2d | 3d → 0.6d | resources none → Administrator Baz Danych; Kierownik Projektu |
| 21 | **Baza danych SQL** |  |  | 19d → 30.4d | 3d → 0.6d | resources none → Administrator Baz Danych; Kierownik Projektu; Programista; Tester Oprogramowania |
| 22 | **Specyfikacja techniczna** |  |  | 19d → 30.4d | 3d → 0.6d | resources none → Administrator Baz Danych; Kierownik Projektu; Programista; Tester Oprogramowania |
| 23 | Opracuj specyfikacje techniczne |  |  | 5d → 8d | 8d → 13.4d | resources none → Administrator Baz Danych; Kierownik Projektu |
| 24 | Zapoznaj się z specyfikacjami technicznymi z zespołem projektowym |  |  | 4d → 6.4d | 8d → 13.4d | resources none → Administrator Baz Danych; Kierownik Projektu; Programista; Tester Oprogramowania |
| 25 | Uzyskaj akceptację zespołu |  |  | 2d → 3.2d | 3d → 0.6d | resources none → Administrator Baz Danych; Kierownik Projektu |
| 26 | **Implementacja** |  |  | 4d → 6.4d | 3d → 0.6d | resources none → Administrator Baz Danych; Kierownik Projektu; Programista; Tester Oprogramowania; Specjalista ds. Zapewnienia Jakości |
| 27 | **Baza danych SQL** |  |  | 4d → 6.4d | 3d → 0.6d | resources none → Administrator Baz Danych; Kierownik Projektu; Programista; Tester Oprogramowania |
| 28 | Identyfikuj relacje |  |  | 1d → 1.6d | 3d → 0.6d | resources none → Administrator Baz Danych |
| 29 | Tworzenie tabel bazy danych |  |  | 1d → 1.6d | 3d → 0.6d | resources none → Administrator Baz Danych |
| 30 | Przegląd tabel z zespołem projektowym |  |  | 1d → 1.6d | 3d → 0.6d | resources none → Administrator Baz Danych; Kierownik Projektu; Programista; Tester Oprogramowania |
| 31 | Uzyskaj akceptację zespołu |  |  | 1d → 1.6d | 3d → 0.6d | resources none → Administrator Baz Danych |
| 32 | **Zapewnienie jakości** |  | 2024-05-03 → 2024-05-07 (+4d) | 2d? → 5d? | 3d → 0.2d | resources none → Specjalista ds. Zapewnienia Jakości |
| 33 | **Baza danych SQL** |  | 2024-05-03 → 2024-05-07 (+4d) | 2d? → 5d? | 3d → 0.2d | resources none → Specjalista ds. Zapewnienia Jakości |
| 34 | Weryfikuj elementy projektu / danych |  | 2024-05-02 → 2024-05-03 (+1d) | 1d? → 1.6d? | 3d → 0.2d | resources none → Specjalista ds. Zapewnienia Jakości |
| 35 | Zweryfikuj relacje |  | 2024-05-03 → 2024-05-07 (+4d) | 1d? → 1.6d? | 3d → 0.2d | resources none → Specjalista ds. Zapewnienia Jakości |
| 36 | **Raporty** | 2024-05-06 → 2024-05-07 (+1d) | 2024-05-06 → 2024-05-08 (+2d) | 1d → 2d | 3d → 0.2d | resources none → Specjalista ds. Zapewnienia Jakości |
| 37 | Sprawdź projekt i funkcjonalność | 2024-05-06 → 2024-05-07 (+1d) | 2024-05-06 → 2024-05-08 (+2d) | 1d → 1.6d | 3d → 0.2d | resources none → Specjalista ds. Zapewnienia Jakości |
| 41 | **Iteracja 3 - Komunikacja między modułami** | 2024-05-07 → 2024-05-08 (+1d) | 2024-05-16 → 2024-05-22 (+6d) | 8d → 15.8d | 3d → 0d | resources none → Administrator Baz Danych; Kierownik Projektu; Programista; Specjalista ds. Zapewnienia Jakości; Tester Oprogramowania |
| 42 | **Projektowanie** | 2024-05-07 → 2024-05-08 (+1d) | 2024-05-09 → 2024-05-14 (+5d) | 3d → 6.2d | 3d → 0d | resources none → Kierownik Projektu; Programista; Administrator Baz Danych; Tester Oprogramowania |
| 43 | **Interfejsy podsystemów** | 2024-05-07 → 2024-05-08 (+1d) | 2024-05-09 → 2024-05-14 (+5d) | 3d → 6.2d | 3d → 0d | resources none → Kierownik Projektu; Programista; Administrator Baz Danych; Tester Oprogramowania |
| 44 | **Określ elementy importu / eksportu danych** | 2024-05-07 → 2024-05-08 (+1d) | 2024-05-07 → 2024-05-09 (+2d) | 1d → 1.6d | 3d → 1d | resources none → Administrator Baz Danych; Kierownik Projektu; Programista; Tester Oprogramowania |
| 45 | Zdefiniuj potrzeby użytkownika | 2024-05-07 → 2024-05-08 (+1d) | 2024-05-07 → 2024-05-09 (+2d) | 1d → 1.6d | 3d → 1d | resources none → Kierownik Projektu; Programista |
| 46 | Zdefiniuj potrzeby informatyczne | 2024-05-07 → 2024-05-08 (+1d) | 2024-05-07 → 2024-05-09 (+2d) | 1d → 1.6d | 3d → 1d | resources none → Programista |
| 47 | Interfejsy projektowe | 2024-05-08 → 2024-05-09 (+1d) | 2024-05-08 → 2024-05-10 (+2d) | 1d → 1.6d | 3d → 1d | resources none → Programista |
| 48 | Uzyskaj akceptację zespołu | 2024-05-09 → 2024-05-10 (+1d) | 2024-05-09 → 2024-05-14 (+5d) | 1d → 2.4d | 3d → 0d | resources none → Administrator Baz Danych; Programista; Specjalista ds. Zapewnienia Jakości; Tester Oprogramowania |
| 49 | **Implementacja** | 2024-05-10 → 2024-05-14 (+4d) | 2024-05-14 → 2024-05-17 (+3d) | 3d → 4.8d | 3d → 0d | resources none → Programista; Administrator Baz Danych; Kierownik Projektu; Tester Oprogramowania; Specjalista ds. Zapewnienia Jakości |
| 50 | **Interfejsy międzymodułowe** | 2024-05-10 → 2024-05-14 (+4d) | 2024-05-14 → 2024-05-17 (+3d) | 3d → 4.8d | 3d → 0d | resources none → Programista; Administrator Baz Danych; Kierownik Projektu; Tester Oprogramowania; Specjalista ds. Zapewnienia Jakości |
| 51 | Zbuduj interfejsy | 2024-05-10 → 2024-05-14 (+4d) | 2024-05-10 → 2024-05-15 (+5d) | 1d → 1.6d | 3d → 0d | resources none → Programista |
| 52 | Przeprowadź test jednostkowy funkcji importu / eksportu | 2024-05-13 → 2024-05-15 (+2d) | 2024-05-13 → 2024-05-16 (+3d) | 1d → 1.6d | 3d → 0d | resources none → Tester Oprogramowania |
| 53 | Uzyskaj akceptację zespołu | 2024-05-14 → 2024-05-16 (+2d) | 2024-05-14 → 2024-05-17 (+3d) | 1d → 1.6d | 3d → 0d | resources none → Administrator Baz Danych; Kierownik Projektu; Programista; Tester Oprogramowania |
| 54 | **Zapewnienie jakości** | 2024-05-15 → 2024-05-17 (+2d) | 2024-05-16 → 2024-05-22 (+6d) | 2d → 4.8d | 3d → 0d | resources none → Specjalista ds. Zapewnienia Jakości |
| 55 | **Interfejsy** | 2024-05-15 → 2024-05-17 (+2d) | 2024-05-15 → 2024-05-20 (+5d) | 1d → 2d | 3d → 0d | resources none → Specjalista ds. Zapewnienia Jakości |
| 56 | Sprawdź projekt i funkcjonalność | 2024-05-15 → 2024-05-17 (+2d) | 2024-05-15 → 2024-05-20 (+5d) | 1d → 1.6d | 3d → 0d | resources none → Specjalista ds. Zapewnienia Jakości |
| 57 | **Raporty** | 2024-05-16 → 2024-05-21 (+5d) | 2024-05-16 → 2024-05-22 (+6d) | 1d → 2d | 3d → 0d | resources none → Specjalista ds. Zapewnienia Jakości |
| 58 | Sprawdź projekt i funkcjonalność | 2024-05-16 → 2024-05-21 (+5d) | 2024-05-16 → 2024-05-22 (+6d) | 1d → 1.6d | 3d → 0d | resources none → Specjalista ds. Zapewnienia Jakości |
| 62 | **Iteracja 4 - Interfejs użytkownika** | 2024-05-17 → 2024-05-22 (+5d) | 2024-05-30 → 2024-06-07 (+8d) | 10d → 19d | 3d → 0d | resources none → Administrator Baz Danych; Kierownik Projektu; Programista; Specjalista ds. Zapewnienia Jakości; Tester Oprogramowania |
| 63 | **Projektowanie** | 2024-05-17 → 2024-05-22 (+5d) | 2024-05-22 → 2024-05-28 (+6d) | 4d → 6.4d | 3d → 0d | resources none → Administrator Baz Danych; Kierownik Projektu; Programista; Tester Oprogramowania |
| 64 | **Interfejs użytkownika internetowego** | 2024-05-17 → 2024-05-22 (+5d) | 2024-05-22 → 2024-05-28 (+6d) | 4d → 6.4d | 3d → 0d | resources none → Administrator Baz Danych; Kierownik Projektu; Programista; Tester Oprogramowania |
| 65 | **Specyfikacje funkcjonalne** | 2024-05-17 → 2024-05-22 (+5d) | 2024-05-22 → 2024-05-28 (+6d) | 4d → 6.4d | 3d → 0d | resources none → Administrator Baz Danych; Kierownik Projektu; Programista; Tester Oprogramowania |
| 66 | Utwórz makiety interfejsu użytkownika | 2024-05-17 → 2024-05-22 (+5d) | 2024-05-17 → 2024-05-23 (+6d) | 1d → 1.6d | 3d → 0d | resources none → Kierownik Projektu; Programista |
| 67 | Przeprowadź przegląd projektu | 2024-05-20 → 2024-05-23 (+3d) | 2024-05-20 → 2024-05-24 (+4d) | 1d → 1.6d | 3d → 0d | resources none → Administrator Baz Danych; Kierownik Projektu; Programista; Tester Oprogramowania |
| 68 | Dostarcz ostateczne specyfikacje funkcjonalne | 2024-05-21 → 2024-05-24 (+3d) | 2024-05-21 → 2024-05-27 (+6d) | 1d → 1.6d | 3d → 0d | resources none → Kierownik Projektu; Programista; Administrator Baz Danych; Tester Oprogramowania |
| 69 | Uzyskaj akceptację użytkownika | 2024-05-22 → 2024-05-27 (+5d) | 2024-05-22 → 2024-05-28 (+6d) | 1d → 1.6d | 3d → 0d | resources none → Kierownik Projektu |
| 70 | **Implementacja** | 2024-05-23 → 2024-05-28 (+5d) | 2024-05-27 → 2024-05-31 (+4d) | 3d → 4.8d | 3d → 0d | resources none → Programista; Administrator Baz Danych; Kierownik Projektu; Tester Oprogramowania |
| 71 | **Interfejs WWW** | 2024-05-23 → 2024-05-28 (+5d) | 2024-05-27 → 2024-05-31 (+4d) | 3d → 4.8d | 3d → 0d | resources none → Programista; Administrator Baz Danych; Kierownik Projektu; Tester Oprogramowania |
| 72 | Kodowanie strony internetowej | 2024-05-23 → 2024-05-28 (+5d) | 2024-05-23 → 2024-05-29 (+6d) | 1d → 1.6d | 3d → 0d | resources none → Programista |
| 73 | Przeprowadzenie testów jednostkowych | 2024-05-23 → 2024-05-28 (+5d) | 2024-05-23 → 2024-05-29 (+6d) | 1d → 1.6d | 3d → 0d | resources none → Tester Oprogramowania |
| 74 | Przejrzenie projektu / funkcjonalności strony internetowej | 2024-05-24 → 2024-05-29 (+5d) | 2024-05-24 → 2024-05-30 (+6d) | 1d → 1.6d | 3d → 0d | resources none → Administrator Baz Danych; Kierownik Projektu; Programista; Tester Oprogramowania |
| 75 | Uzyskaj akceptację użytkownika | 2024-05-27 → 2024-05-30 (+3d) | 2024-05-27 → 2024-05-31 (+4d) | 1d → 1.6d | 3d → 0d | resources none → Kierownik Projektu |
| 76 | **Zapewnienie jakości** | 2024-05-28 → 2024-05-31 (+3d) | 2024-05-30 → 2024-06-07 (+8d) | 3d → 7.8d | 3d → 0d | resources none → Specjalista ds. Zapewnienia Jakości; Tester Oprogramowania |
| 77 | **Interfejs WWW** | 2024-05-28 → 2024-05-31 (+3d) | 2024-05-29 → 2024-06-05 (+7d) | 2d → 4.8d | 3d → 0d | resources none → Specjalista ds. Zapewnienia Jakości; Tester Oprogramowania |
| 78 | Sprawdź projekt i funkcjonalność | 2024-05-28 → 2024-05-31 (+3d) | 2024-05-28 → 2024-06-03 (+6d) | 1d → 1.6d | 3d → 0d | resources none → Specjalista ds. Zapewnienia Jakości |

| ID | Task | Start | Finish | Duration | Total float | Other |
| --- | --- | --- | --- | --- | --- | --- |
| 79 | Przeprowadzenie testów jednostkowych | 2024-05-29 → 2024-06-03 (+5d) | 2024-05-29 → 2024-06-05 (+7d) | 1d → 2.4d | 3d → 0.2d | resources none → Specjalista ds. Zapewnienia Jakości; Tester Oprogramowania |
| 80 | **Raporty** | 2024-05-30 → 2024-06-05 (+6d) | 2024-05-30 → 2024-06-07 (+8d) | 1d → 3d | 3d → 0.2d | resources none → Specjalista ds. Zapewnienia Jakości |
| 81 | Sprawdź projekt i funkcjonalność | 2024-05-30 → 2024-06-05 (+6d) | 2024-05-30 → 2024-06-07 (+8d) | 1d → 1.6d | 3d → 0.2d | resources none → Specjalista ds. Zapewnienia Jakości |
| 85 | **Iteracja 5 - Integracja modułów** | 2024-05-31 → 2024-06-07 (+7d) | 2024-06-05 → 2024-06-14 (+9d) | 4d → 8.6d | 3d → 0.2d | resources none → Administrator Baz Danych; Programista; Specjalista ds. Zapewnienia Jakości; Tester Oprogramowania |
| 86 | **Zapewnienie jakości** | 2024-05-31 → 2024-06-07 (+7d) | 2024-06-03 → 2024-06-12 (+9d) | 2d → 5d | 3d → 0d | resources none → Specjalista ds. Zapewnienia Jakości; Tester Oprogramowania |
| 87 | **Interfejs WWW** | 2024-05-31 → 2024-06-07 (+7d) | 2024-05-31 → 2024-06-10 (+10d) | 1d → 2d | 4d → 3d | resources none → Specjalista ds. Zapewnienia Jakości; Tester Oprogramowania |
| 88 | Wykonaj test integracji | 2024-05-31 → 2024-06-07 (+7d) | 2024-05-31 → 2024-06-10 (+10d) | 1d → 2.4d | 4d → 3d | resources none → Specjalista ds. Zapewnienia Jakości; Tester Oprogramowania |
| 89 | **Baza danych SQL** | 2024-05-31 → 2024-06-07 (+7d) | 2024-05-31 → 2024-06-10 (+10d) | 1d → 2d | 4d → 3d | resources none → Specjalista ds. Zapewnienia Jakości; Tester Oprogramowania |
| 90 | Wykonaj test integracji | 2024-05-31 → 2024-06-07 (+7d) | 2024-05-31 → 2024-06-10 (+10d) | 1d → 2.4d | 4d → 3d | resources none → Specjalista ds. Zapewnienia Jakości; Tester Oprogramowania |
| 91 | **Interfejsy** | 2024-05-31 → 2024-06-07 (+7d) | 2024-05-31 → 2024-06-10 (+10d) | 1d → 2d | 3d → 0.2d | resources none → Specjalista ds. Zapewnienia Jakości; Tester Oprogramowania |
| 92 | Wykonaj test integracji | 2024-05-31 → 2024-06-07 (+7d) | 2024-05-31 → 2024-06-10 (+10d) | 1d → 2.4d | 3d → 0.2d | resources none → Specjalista ds. Zapewnienia Jakości; Tester Oprogramowania |
| 93 | **Raporty** | 2024-06-03 → 2024-06-10 (+7d) | 2024-06-03 → 2024-06-12 (+9d) | 1d → 3d | 3d → 0d | resources none → Specjalista ds. Zapewnienia Jakości; Tester Oprogramowania |
| 94 | Raportuj test integracji | 2024-06-03 → 2024-06-10 (+7d) | 2024-06-03 → 2024-06-12 (+9d) | 1d → 2.4d | 3d → 0d | resources none → Specjalista ds. Zapewnienia Jakości; Tester Oprogramowania |
| 95 | **Implementacja** | 2024-06-04 → 2024-06-12 (+8d) | 2024-06-04 → 2024-06-13 (+9d) | 1d → 1.6d | 3d → 0d | resources none → Programista; Administrator Baz Danych |
| 96 | Wprowadzenie poprawek na podstawie wyników testów integracyjnych | 2024-06-04 → 2024-06-12 (+8d) | 2024-06-04 → 2024-06-13 (+9d) | 1d → 1.6d | 3d → 0d | resources none → Programista; Administrator Baz Danych |
| 97 | **Zapewnienie jakości** | 2024-06-05 → 2024-06-13 (+8d) | 2024-06-05 → 2024-06-14 (+9d) | 1d → 2d | 3d → 0d | resources none → Specjalista ds. Zapewnienia Jakości; Tester Oprogramowania |
| 98 | **Interfejs WWW** | 2024-06-05 → 2024-06-13 (+8d) | 2024-06-05 → 2024-06-14 (+9d) | 1d → 2d | 3d → 0d | resources none → Specjalista ds. Zapewnienia Jakości; Tester Oprogramowania |
| 99 | Wykonaj test akceptacji użytkownika | 2024-06-05 → 2024-06-13 (+8d) | 2024-06-05 → 2024-06-14 (+9d) | 1d → 2.4d | 3d → 0d | resources none → Specjalista ds. Zapewnienia Jakości; Tester Oprogramowania |
| 100 | **Baza danych SQL** | 2024-06-05 → 2024-06-13 (+8d) | 2024-06-05 → 2024-06-14 (+9d) | 1d → 2d | 3d → 0d | resources none → Specjalista ds. Zapewnienia Jakości; Tester Oprogramowania |
| 101 | Wykonaj test akceptacji użytkownika | 2024-06-05 → 2024-06-13 (+8d) | 2024-06-05 → 2024-06-14 (+9d) | 1d → 2.4d | 3d → 0d | resources none → Specjalista ds. Zapewnienia Jakości; Tester Oprogramowania |
| 102 | **Interfejsy** | 2024-06-05 → 2024-06-13 (+8d) | 2024-06-05 → 2024-06-14 (+9d) | 1d → 2d | 3d → 0d | resources none → Specjalista ds. Zapewnienia Jakości; Tester Oprogramowania |
| 103 | Wykonaj test akceptacji użytkownika | 2024-06-05 → 2024-06-13 (+8d) | 2024-06-05 → 2024-06-14 (+9d) | 1d → 2.4d | 3d → 0d | resources none → Specjalista ds. Zapewnienia Jakości; Tester Oprogramowania |
| 104 | **Raporty** | 2024-06-05 → 2024-06-13 (+8d) | 2024-06-05 → 2024-06-14 (+9d) | 1d → 2d | 3d → 0d | resources none → Specjalista ds. Zapewnienia Jakości; Tester Oprogramowania |
| 105 | Raportuj test akceptacji użytkownika | 2024-06-05 → 2024-06-13 (+8d) | 2024-06-05 → 2024-06-14 (+9d) | 1d → 2.4d | 3d → 0d | resources none → Specjalista ds. Zapewnienia Jakości; Tester Oprogramowania |
| 109 | **Iteracja 6 - Wprowadzenie projektu** | 2024-06-06 → 2024-06-14 (+8d) | 2024-06-18 → 2024-06-26 (+8d) | 9d? → 12.6d? |  | resources none → Administrator Baz Danych; Kierownik Projektu; Programista; Tester Oprogramowania; Specjalista ds. Zapewnienia Jakości |
| 110 | **Projektowanie** | 2024-06-06 → 2024-06-14 (+8d) | 2024-06-07 → 2024-06-18 (+11d) | 2d → 3.2d | 3d → 0.8d | resources none → Administrator Baz Danych; Kierownik Projektu; Programista; Tester Oprogramowania |
| 111 | **Informacja zwrotna** | 2024-06-06 → 2024-06-14 (+8d) | 2024-06-07 → 2024-06-18 (+11d) | 2d → 3.2d | 3d → 0.8d | resources none → Kierownik Projektu; Administrator Baz Danych; Programista; Tester Oprogramowania |
| 112 | Zdefiniowanie wymaganych modyfikacji | 2024-06-06 → 2024-06-14 (+8d) | 2024-06-06 → 2024-06-17 (+11d) | 1d → 1.6d | 3d → 0.8d | resources none → Administrator Baz Danych; Kierownik Projektu; Programista; Tester Oprogramowania |
| 113 | Akceptacja użytkownika | 2024-06-07 → 2024-06-17 (+10d) | 2024-06-07 → 2024-06-18 (+11d) | 1d → 1.6d | 3d → 0.8d | resources none → Kierownik Projektu |
| 114 | **Implementacja** | 2024-06-10 → 2024-06-18 (+8d) | 2024-06-10 → 2024-06-19 (+9d) | 1d? → 1.6d? | 3d → 0.8d | resources none → Administrator Baz Danych; Programista |
| 115 | Implementacja modyfikacji określonych przez użytkownika | 2024-06-10 → 2024-06-18 (+8d) | 2024-06-10 → 2024-06-19 (+9d) | 1d? → 1.6d? | 3d → 0.8d | resources none → Administrator Baz Danych; Programista |
| 116 | **Zapewnienie jakości** | 2024-06-11 → 2024-06-19 (+8d) | 2024-06-17 → 2024-06-25 (+8d) | 5d → 5.8d |  | resources none → Specjalista ds. Zapewnienia Jakości; Tester Oprogramowania; Administrator Baz Danych; Kierownik Projektu; Programista [200%] |
| 117 | Wykonaj test integracji | 2024-06-11 → 2024-06-19 (+8d) | 2024-06-11 → 2024-06-21 (+10d) | 1d → 2.4d | 3d → 0d | resources none → Specjalista ds. Zapewnienia Jakości; Tester Oprogramowania |
| 118 | Wykonaj test akceptacji użytkownika | 2024-06-13 → 2024-06-21 (+8d) | 2024-06-14 → 2024-06-25 (+11d) | 1d → 2.4d | 2d → 0d | resources none → Specjalista ds. Zapewnienia Jakości; Tester Oprogramowania |
| 119 | Uzyskaj akceptację użytkownika | 2024-06-14 → 2024-06-19 (+5d) | 2024-06-17 → 2024-06-25 (+8d) | 2d → 4.8d |  | resources none → Specjalista ds. Zapewnienia Jakości; Tester Oprogramowania |
| 120 | **Raporty** | 2024-06-18 → 2024-06-25 (+7d) | 2024-06-18 → 2024-06-26 (+8d) | 1d → 2d |  | resources none → Specjalista ds. Zapewnienia Jakości; Tester Oprogramowania |
| 121 | Uzyskaj akceptację użytkownika | 2024-06-18 → 2024-06-25 (+7d) | 2024-06-18 → 2024-06-26 (+8d) | 1d → 2.4d |  | resources none → Specjalista ds. Zapewnienia Jakości; Tester Oprogramowania |

## Version 5 (data date 2024-05-06, saved 2024-05-06, file lista2 — Poprawione iteracje.mpp)

Note of the change: kamienie milowe i terminarz projektu

Last finish 2024-06-26 → 2024-08-15 (+50d).

Added:

| ID | Task | Duration | Start | Finish | Predecessors |
| --- | --- | --- | --- | --- | --- |
| 12 | Ustalone specyfikacje funkcjonalne | 0d | 2024-04-01 | 2024-04-01 | 2 |
| 39 | Wytworzenie bazy danych | 0d | 2024-04-24 | 2024-04-24 | 37 |
| 60 | Wytworzenie interfejsów międzymodułowych | 0d | 2024-05-28 | 2024-05-28 | 55 |
| 83 | Wytworzenie interfejsu użytkownika | 0d | 2024-07-09 | 2024-07-09 | 77 |
| 107 | Zakończenie integracji systemu | 0d | 2024-07-25 | 2024-07-25 | 98 |
| 123 | Wdrożenie projektu | 0d | 2024-08-15 | 2024-08-15 | 121 |

Changed:

| ID | Task | Start | Finish | Duration | Total float |
| --- | --- | --- | --- | --- | --- |
| 1 | **Iteracja 1 - Definicja wymagań** |  | 2024-03-29 → 2024-04-01 (+3d) | 8d → 9d | 0.6d → 0.4d |
| 2 | **Raporty** |  | 2024-03-29 → 2024-04-01 (+3d) | 8d → 9d | 0.6d → 0.4d |
| 3 | **Specyfikacje funkcjonalne** |  | 2024-03-29 → 2024-04-01 (+3d) | 8d → 9d | 0.6d → 0.4d |
| 4 | **Zbierz wymagania użytkownika** |  |  | 1.6d → 1d | 0.6d → 0.4d |
| 5 | Zdefiniuj elementy danych |  |  | 1.6d → 1d | 0.6d → 0.4d |
| 6 | Zdefiniuj częstotliwość wywoływania strony |  |  | 1.6d → 1d | 0.6d → 0.4d |
| 7 | Zdefiniuj odbiorców |  |  | 1.6d → 1d | 0.6d → 0.4d |
| 8 | Raporty z wykonanych projektów | 2024-03-26 → 2024-03-25 (-1d) |  | 1.6d → 1d | 0.6d → 0.4d |
| 9 | Zdefiniuj raport z zespołem projektowym | 2024-03-27 → 2024-03-26 (-1d) |  | 1.6d → 2d | 0.6d → 0.4d |
| 10 | Dostarcz ostateczne specyfikacje funkcjonalne | 2024-03-28 → 2024-03-27 (-1d) |  | 1.6d → 2d | 0.6d → 0.4d |
| 11 | Uzyskaj akceptację użytkownika | 2024-03-29 → 2024-03-28 (-1d) | 2024-03-29 → 2024-04-01 (+3d) | 1.6d → 3d | 0.6d → 0.4d |
| 15 | **Iteracja 2 - Baza danych** |  | 2024-05-08 → 2024-04-24 (-14d) | 44.2d? → 27.4d | 0.2d → 0.4d |
| 16 | **Projektowanie** |  | 2024-04-25 → 2024-04-10 (-15d) | 30.4d → 11d | 0.6d → 0.4d |
| 17 | **Interfejs użytkownika internetowego** |  | 2024-04-25 → 2024-04-10 (-15d) | 30.4d → 11d | 0.6d → 0.4d |
| 18 | **Specyfikacja techniczna** |  | 2024-04-25 → 2024-04-10 (-15d) | 30.4d → 11d | 0.6d → 0.4d |
| 19 | Opracuj specyfikacje techniczne |  | 2024-04-05 → 2024-04-04 (-1d) | 8d → 5d | 0.6d → 0.4d |
| 20 | Zapoznaj się z specyfikacjami technicznymi z zespołem projektowym | 2024-04-08 → 2024-04-04 (-4d) | 2024-04-23 → 2024-04-09 (-14d) | 19.2d → 4d | 0.6d → 0.4d |
| 21 | Uzyskaj akceptację zespołu | 2024-04-24 → 2024-04-09 (-15d) | 2024-04-25 → 2024-04-10 (-15d) | 3.2d → 2d | 0.6d → 0.4d |
| 22 | **Baza danych SQL** |  | 2024-04-25 → 2024-04-10 (-15d) | 30.4d → 11d | 0.6d → 0.4d |
| 23 | **Specyfikacja techniczna** |  | 2024-04-25 → 2024-04-10 (-15d) | 30.4d → 11d | 0.6d → 0.4d |
| 24 | Opracuj specyfikacje techniczne |  | 2024-04-05 → 2024-04-04 (-1d) | 8d → 5d | 13.4d → 0.4d |
| 25 | Zapoznaj się z specyfikacjami technicznymi z zespołem projektowym | 2024-04-08 → 2024-04-04 (-4d) | 2024-04-11 → 2024-04-09 (-2d) | 6.4d → 4d | 13.4d → 0.4d |
| 26 | Uzyskaj akceptację zespołu | 2024-04-24 → 2024-04-09 (-15d) | 2024-04-25 → 2024-04-10 (-15d) | 3.2d → 2d | 0.6d → 0.4d |
| 27 | **Implementacja** | 2024-04-26 → 2024-04-10 (-16d) | 2024-05-01 → 2024-04-16 (-15d) | 6.4d → 6d | 0.6d → 0.4d |
| 28 | **Baza danych SQL** | 2024-04-26 → 2024-04-10 (-16d) | 2024-05-01 → 2024-04-16 (-15d) | 6.4d → 6d | 0.6d → 0.4d |
| 29 | Identyfikuj relacje | 2024-04-26 → 2024-04-10 (-16d) | 2024-04-26 → 2024-04-11 (-15d) | 1.6d → 2d | 0.6d → 0.4d |
| 30 | Tworzenie tabel bazy danych | 2024-04-29 → 2024-04-11 (-18d) | 2024-04-29 → 2024-04-12 (-17d) | 1.6d → 2d | 0.6d → 0.4d |
| 31 | Przegląd tabel z zespołem projektowym | 2024-04-30 → 2024-04-15 (-15d) | 2024-04-30 → 2024-04-15 (-15d) | 1.6d → 1d | 0.6d → 0.4d |
| 32 | Uzyskaj akceptację zespołu | 2024-05-01 → 2024-04-15 (-16d) | 2024-05-01 → 2024-04-16 (-15d) | 1.6d → 1d | 0.6d → 0.4d |
| 33 | **Zapewnienie jakości** | 2024-05-02 → 2024-04-16 (-16d) | 2024-05-07 → 2024-04-19 (-18d) | 5d? → 5.6d | 0.2d → 0.4d |
| 34 | **Baza danych SQL** | 2024-05-02 → 2024-04-16 (-16d) | 2024-05-07 → 2024-04-19 (-18d) | 5d? → 5.6d | 0.2d → 0.4d |
| 35 | Weryfikuj elementy projektu / danych | 2024-05-02 → 2024-04-16 (-16d) | 2024-05-03 → 2024-04-17 (-16d) | 1.6d? → 2d | 0.2d → 0.4d |
| 36 | Zweryfikuj relacje | 2024-05-03 → 2024-04-18 (-15d) | 2024-05-07 → 2024-04-19 (-18d) | 1.6d? → 2d | 0.2d → 0.4d |
| 37 | **Raporty** | 2024-05-07 → 2024-04-22 (-15d) | 2024-05-08 → 2024-04-24 (-14d) | 2d → 4d | 0.2d → 0.4d |
| 38 | Sprawdź projekt i funkcjonalność | 2024-05-07 → 2024-04-22 (-15d) | 2024-05-08 → 2024-04-24 (-14d) | 1.6d → 3d | 0.2d → 0.4d |
| 42 | **Iteracja 3 - Komunikacja między modułami** | 2024-05-08 → 2024-04-24 (-14d) | 2024-05-22 → 2024-05-28 (+6d) | 15.8d → 38.4d |  |
| 43 | **Projektowanie** | 2024-05-08 → 2024-04-24 (-14d) | 2024-05-14 → 2024-05-03 (-11d) | 6.2d → 10.6d | 0d → 0.4d |
| 44 | **Interfejsy podsystemów** | 2024-05-08 → 2024-04-24 (-14d) | 2024-05-14 → 2024-05-03 (-11d) | 6.2d → 10.6d | 0d → 0.4d |
| 45 | **Określ elementy importu / eksportu danych** | 2024-05-08 → 2024-04-24 (-14d) | 2024-05-09 → 2024-04-26 (-13d) | 1.6d → 3d | 1d → 1.2d |
| 46 | Zdefiniuj potrzeby użytkownika | 2024-05-08 → 2024-04-24 (-14d) | 2024-05-09 → 2024-04-26 (-13d) | 1.6d → 3d | 1d → 1.2d |
| 47 | Zdefiniuj potrzeby informatyczne | 2024-05-08 → 2024-04-24 (-14d) | 2024-05-09 → 2024-04-26 (-13d) | 1.6d → 3d | 1d → 1.2d |
| 48 | Interfejsy projektowe | 2024-05-09 → 2024-04-26 (-13d) | 2024-05-10 → 2024-05-01 (-9d) | 1.6d → 5d | 1d → 1.2d |
| 49 | Uzyskaj akceptację zespołu | 2024-05-10 → 2024-05-01 (-9d) | 2024-05-14 → 2024-05-03 (-11d) | 2.4d → 2d | 0d → 0.4d |
| 50 | **Implementacja** | 2024-05-14 → 2024-05-03 (-11d) |  | 4.8d → 17d | 0d → 0.4d |
| 51 | **Interfejsy międzymodułowe** | 2024-05-14 → 2024-05-03 (-11d) |  | 4.8d → 17d | 0d → 0.4d |
| 52 | Zbuduj interfejsy | 2024-05-14 → 2024-05-03 (-11d) | 2024-05-15 → 2024-05-13 (-2d) | 1.6d → 10d | 0d → 0.4d |
| 53 | Przeprowadź test jednostkowy funkcji importu / eksportu | 2024-05-15 → 2024-05-13 (-2d) |  | 1.6d → 4d | 0d → 0.4d |
| 54 | Uzyskaj akceptację zespołu |  |  | 1.6d → 3d | 0d → 0.4d |
| 55 | **Zapewnienie jakości** | 2024-05-17 → 2024-05-20 (+3d) | 2024-05-22 → 2024-05-28 (+6d) | 4.8d → 10.4d |  |
| 56 | **Interfejsy** | 2024-05-17 → 2024-05-20 (+3d) | 2024-05-20 → 2024-05-22 (+2d) | 2d → 4d |  |
| 57 | Sprawdź projekt i funkcjonalność | 2024-05-17 → 2024-05-20 (+3d) | 2024-05-20 → 2024-05-22 (+2d) | 1.6d → 3d |  |
| 58 | **Raporty** | 2024-05-21 → 2024-05-24 (+3d) | 2024-05-22 → 2024-05-28 (+6d) | 2d → 4d |  |
| 59 | Sprawdź projekt i funkcjonalność | 2024-05-21 → 2024-05-24 (+3d) | 2024-05-22 → 2024-05-28 (+6d) | 1.6d → 3d |  |
| 63 | **Iteracja 4 - Interfejs użytkownika** | 2024-05-22 → 2024-05-28 (+6d) | 2024-06-07 → 2024-07-09 (+32d) | 19d → 47.4d |  |
| 64 | **Projektowanie** | 2024-05-22 → 2024-05-28 (+6d) | 2024-05-28 → 2024-06-07 (+10d) | 6.4d → 12d | 0d → 0.4d |
| 65 | **Interfejs użytkownika internetowego** | 2024-05-22 → 2024-05-28 (+6d) | 2024-05-28 → 2024-06-07 (+10d) | 6.4d → 12d | 0d → 0.4d |
| 66 | **Specyfikacje funkcjonalne** | 2024-05-22 → 2024-05-28 (+6d) | 2024-05-28 → 2024-06-07 (+10d) | 6.4d → 12d | 0d → 0.4d |
| 67 | Utwórz makiety interfejsu użytkownika | 2024-05-22 → 2024-05-28 (+6d) | 2024-05-23 → 2024-05-31 (+8d) | 1.6d → 4d | 0d → 0.4d |
| 68 | Przeprowadź przegląd projektu | 2024-05-23 → 2024-05-31 (+8d) | 2024-05-24 → 2024-06-04 (+11d) | 1.6d → 3d | 0d → 0.4d |
| 69 | Dostarcz ostateczne specyfikacje funkcjonalne | 2024-05-24 → 2024-06-04 (+11d) | 2024-05-27 → 2024-06-05 (+9d) | 1.6d → 2d | 0d → 0.4d |
| 70 | Uzyskaj akceptację użytkownika | 2024-05-27 → 2024-06-05 (+9d) | 2024-05-28 → 2024-06-07 (+10d) | 1.6d → 3d | 0d → 0.4d |
| 71 | **Implementacja** | 2024-05-28 → 2024-06-07 (+10d) | 2024-05-31 → 2024-06-26 (+26d) | 4.8d → 22d | 0d → 0.4d |
| 72 | **Interfejs WWW** | 2024-05-28 → 2024-06-07 (+10d) | 2024-05-31 → 2024-06-26 (+26d) | 4.8d → 22d | 0d → 0.4d |
| 73 | Kodowanie strony internetowej | 2024-05-28 → 2024-06-07 (+10d) | 2024-05-29 → 2024-06-20 (+22d) | 1.6d → 15d | 0d → 0.4d |
| 74 | Przeprowadzenie testów jednostkowych | 2024-05-28 → 2024-06-14 (+17d) | 2024-05-29 → 2024-06-20 (+22d) | 1.6d → 7d | 0d → 0.4d |
| 75 | Przejrzenie projektu / funkcjonalności strony internetowej | 2024-05-29 → 2024-06-20 (+22d) | 2024-05-30 → 2024-06-25 (+26d) | 1.6d → 4d | 0d → 0.4d |
| 76 | Uzyskaj akceptację użytkownika | 2024-05-30 → 2024-06-25 (+26d) | 2024-05-31 → 2024-06-26 (+26d) | 1.6d → 3d | 0d → 0.4d |
| 77 | **Zapewnienie jakości** | 2024-05-31 → 2024-06-27 (+27d) | 2024-06-07 → 2024-07-09 (+32d) | 7.8d → 13d |  |
| 78 | **Interfejs WWW** | 2024-05-31 → 2024-06-27 (+27d) | 2024-06-05 → 2024-07-04 (+29d) | 4.8d → 8.2d |  |
| 79 | Sprawdź projekt i funkcjonalność | 2024-05-31 → 2024-06-27 (+27d) | 2024-06-03 → 2024-07-02 (+29d) | 1.6d → 4d |  |

| ID | Task | Start | Finish | Duration | Total float |
| --- | --- | --- | --- | --- | --- |
| 80 | Przeprowadzenie testów jednostkowych | 2024-06-03 → 2024-07-02 (+29d) | 2024-06-05 → 2024-07-04 (+29d) | 2.4d → 2d | 0.2d → 0d |
| 81 | **Raporty** | 2024-06-05 → 2024-07-04 (+29d) | 2024-06-07 → 2024-07-09 (+32d) | 3d → 4.8d | 0.2d → 0d |
| 82 | Sprawdź projekt i funkcjonalność | 2024-06-05 → 2024-07-04 (+29d) | 2024-06-07 → 2024-07-09 (+32d) | 1.6d → 3d | 0.2d → 0d |
| 86 | **Iteracja 5 - Integracja modułów** | 2024-06-07 → 2024-07-09 (+32d) | 2024-06-14 → 2024-07-25 (+41d) | 8.6d → 19.4d | 0.2d → 0d |
| 87 | **Zapewnienie jakości** | 2024-06-07 → 2024-07-09 (+32d) | 2024-06-12 → 2024-07-15 (+33d) | 5d → 6d |  |
| 88 | **Interfejs WWW** | 2024-06-07 → 2024-07-09 (+32d) | 2024-06-10 → 2024-07-11 (+31d) | 2d → 3.4d | 3d → 2d |
| 89 | Wykonaj test integracji | 2024-06-07 → 2024-07-09 (+32d) | 2024-06-10 → 2024-07-11 (+31d) | 2.4d → 3d | 3d → 2d |
| 90 | **Baza danych SQL** | 2024-06-07 → 2024-07-09 (+32d) | 2024-06-10 → 2024-07-11 (+31d) | 2d → 3.4d | 3d → 2d |
| 91 | Wykonaj test integracji | 2024-06-07 → 2024-07-09 (+32d) | 2024-06-10 → 2024-07-11 (+31d) | 2.4d → 3d | 3d → 2d |
| 92 | **Interfejsy** | 2024-06-07 → 2024-07-09 (+32d) | 2024-06-10 → 2024-07-11 (+31d) | 2d → 3.4d | 0.2d → 0d |
| 93 | Wykonaj test integracji | 2024-06-07 → 2024-07-09 (+32d) | 2024-06-10 → 2024-07-11 (+31d) | 2.4d → 3d | 0.2d → 0d |
| 94 | **Raporty** | 2024-06-10 → 2024-07-11 (+31d) | 2024-06-12 → 2024-07-15 (+33d) | 3d → 2.6d |  |
| 95 | Raportuj test integracji | 2024-06-10 → 2024-07-11 (+31d) | 2024-06-12 → 2024-07-15 (+33d) | 2.4d → 3d |  |
| 96 | **Implementacja** | 2024-06-12 → 2024-07-15 (+33d) | 2024-06-13 → 2024-07-22 (+39d) | 1.6d → 8d |  |
| 97 | Wprowadzenie poprawek na podstawie wyników testów integracyjnych | 2024-06-12 → 2024-07-15 (+33d) | 2024-06-13 → 2024-07-22 (+39d) | 1.6d → 8d |  |
| 98 | **Zapewnienie jakości** | 2024-06-13 → 2024-07-22 (+39d) | 2024-06-14 → 2024-07-25 (+41d) | 2d → 5.4d |  |
| 99 | **Interfejs WWW** | 2024-06-13 → 2024-07-22 (+39d) | 2024-06-14 → 2024-07-25 (+41d) | 2d → 5.4d |  |
| 100 | Wykonaj test akceptacji użytkownika | 2024-06-13 → 2024-07-22 (+39d) | 2024-06-14 → 2024-07-25 (+41d) | 2.4d → 5.4d |  |
| 101 | **Baza danych SQL** | 2024-06-13 → 2024-07-22 (+39d) | 2024-06-14 → 2024-07-25 (+41d) | 2d → 5.4d |  |
| 102 | Wykonaj test akceptacji użytkownika | 2024-06-13 → 2024-07-22 (+39d) | 2024-06-14 → 2024-07-25 (+41d) | 2.4d → 5.4d |  |
| 103 | **Interfejsy** | 2024-06-13 → 2024-07-22 (+39d) | 2024-06-14 → 2024-07-25 (+41d) | 2d → 5.4d |  |
| 104 | Wykonaj test akceptacji użytkownika | 2024-06-13 → 2024-07-22 (+39d) | 2024-06-14 → 2024-07-25 (+41d) | 2.4d → 5.4d |  |
| 105 | **Raporty** | 2024-06-13 → 2024-07-22 (+39d) | 2024-06-14 → 2024-07-25 (+41d) | 2d → 5.4d |  |
| 106 | Raportuj test akceptacji użytkownika | 2024-06-13 → 2024-07-22 (+39d) | 2024-06-14 → 2024-07-25 (+41d) | 2.4d → 5.4d |  |
| 110 | **Iteracja 6 - Wprowadzenie projektu** | 2024-06-14 → 2024-07-25 (+41d) | 2024-06-26 → 2024-08-15 (+50d) | 12.6d? → 24.4d |  |
| 111 | **Projektowanie** | 2024-06-14 → 2024-07-25 (+41d) | 2024-06-18 → 2024-07-31 (+43d) | 3.2d → 6d | 0.8d → 0d |
| 112 | **Informacja zwrotna** | 2024-06-14 → 2024-07-25 (+41d) | 2024-06-18 → 2024-07-31 (+43d) | 3.2d → 6d | 0.8d → 0d |
| 113 | Zdefiniowanie wymaganych modyfikacji | 2024-06-14 → 2024-07-25 (+41d) | 2024-06-17 → 2024-07-29 (+42d) | 1.6d → 3d | 0.8d → 0d |
| 114 | Akceptacja użytkownika | 2024-06-17 → 2024-07-29 (+42d) | 2024-06-18 → 2024-07-31 (+43d) | 1.6d → 3d | 0.8d → 0d |
| 115 | **Implementacja** | 2024-06-18 → 2024-07-31 (+43d) | 2024-06-19 → 2024-08-08 (+50d) | 1.6d? → 10d | 0.8d → 0d |
| 116 | Implementacja modyfikacji określonych przez użytkownika | 2024-06-18 → 2024-07-31 (+43d) | 2024-06-19 → 2024-08-08 (+50d) | 1.6d? → 10d | 0.8d → 0d |
| 117 | **Zapewnienie jakości** | 2024-06-19 → 2024-08-08 (+50d) | 2024-06-25 → 2024-08-14 (+50d) | 5.8d → 6.6d |  |
| 118 | Wykonaj test integracji | 2024-06-19 → 2024-08-08 (+50d) | 2024-06-21 → 2024-08-12 (+52d) | 2.4d → 3d |  |
| 119 | Wykonaj test akceptacji użytkownika | 2024-06-21 → 2024-08-12 (+52d) | 2024-06-25 → 2024-08-14 (+50d) | 2.4d → 3d |  |
| 120 | Uzyskaj akceptację użytkownika | 2024-06-19 → 2024-08-08 (+50d) | 2024-06-25 → 2024-08-09 (+45d) | 4.8d → 1.8d | 0d → 4.8d |
| 121 | **Raporty** | 2024-06-25 → 2024-08-14 (+50d) | 2024-06-26 → 2024-08-15 (+50d) | 2d → 1.8d |  |
| 122 | Uzyskaj akceptację użytkownika | 2024-06-25 → 2024-08-14 (+50d) | 2024-06-26 → 2024-08-15 (+50d) | 2.4d → 2d |  |
